# Cronograma_SGCONT

How a schedule from MS Project changed from version to version. A marks actual dates.

## Version 1 (saved 2013-03-20)

Note of the change: RM02: Atualização do cronograma com as datas de entrega de cada atividade e o responsável pela atividade.

| ID | WBS | Task | Duration | Start | Finish | Predecessors | Complete | Total float | Constraint |
| --- | --- | --- | --- | --- | --- | --- | --- | --- | --- |
| 1 |  | Ata de Reunião 04/03 | 2h | 2013-03-05 08:00 | 2013-03-05 14:00 |  |  | 88.5d | start no earlier than 2013-03-05 08:00 |
| 2 |  | Ata de Reunião 11/03 | 2h | 2013-03-12 08:00 | 2013-03-12 14:00 |  |  | 60d |  |
| 3 | 3 | **Planejamento** | 16d | 2013-03-12 08:00 A | 2013-04-02 14:00 |  | 2% | 16.5d |  |
| 4 |  | Criação do Cronograma | 6h | 2013-03-12 08:00 | 2013-03-14 14:00 |  |  | 14.75d | start no earlier than 2013-03-12 08:00 |
| 5 |  | Plano de Gerência de Riscos | 2h | 2013-03-21 08:00 | 2013-03-21 14:00 | 6 |  | 36.75d | start no earlier than 2013-03-16 08:00 |
| 6 |  | Criação do Cronograma | 6h | 2013-03-15 08:00 | 2013-03-20 14:00 | 4 |  | 36.75d |  |
| 7 |  | Criação do Cronograma | 6h | 2013-03-12 08:00 A | 2013-03-14 14:00 |  | 33% | 7.25d |  |
| 8 |  | Documento de Visão (Planejamento do Projeto) | 4h | 2013-03-15 08:00 | 2013-03-18 14:00 | 7 |  | 41.75d | start no earlier than 2013-03-14 08:00 |
| 9 |  | Termo de Abertura | 4h | 2013-03-19 08:00 | 2013-03-20 14:00 | 8 |  | 41.75d | start no earlier than 2013-03-13 08:00 |
| 10 |  | Definição das metodologias | 4h | 2013-03-21 08:00 | 2013-03-22 14:00 | 9 |  | 41.75d |  |
| 11 |  | Glossário | 8h | 2013-03-13 08:00 | 2013-03-18 14:00 |  |  | 64d | start no earlier than 2013-03-13 08:00 |
| 12 |  | Documento de Requisitos | 2h | 2013-03-19 08:00 | 2013-03-19 14:00 | 11 |  | 64d | start no earlier than 2013-03-14 08:00 |
| 13 |  | Levantamento e Criação da Arquitetura | 24h | 2013-03-12 08:00 | 2013-03-27 14:00 |  |  | 15.5d |  |
| 14 |  | Levantamento e Criação da Arquitetura | 8h | 2013-03-12 08:00 | 2013-03-15 14:00 |  |  | 0d |  |
| 15 |  | Layout de Telas | 24h | 2013-03-18 08:00 | 2013-04-02 14:00 | 14 |  | 0d |  |
| 16 | 4 | **Gerencia de Configuração** | 29d | 2013-04-03 08:00 | 2013-05-13 14:00 |  |  | 0d |  |
| 17 |  | Desenvolvimento do Plano de Configuração | 8h | 2013-04-03 08:00 | 2013-04-08 14:00 | 15 |  | 0d |  |
| 18 |  | Criação, gerenciamento e organização do Controle de Versão – Subversion | 16h | 2013-04-09 08:00 | 2013-04-18 14:00 | 17 |  | 0d |  |
| 19 |  | - Criação, gerenciamento e organização do Controle de Mudanças – Redmine | 16h | 2013-04-19 08:00 | 2013-04-30 14:00 | 18 |  | 0d |  |
| 20 |  | Auditoria do repositório (cumprimento dos padrões, respeito à organização, etc.) | 12h | 2013-05-01 08:00 | 2013-05-08 14:00 | 19 |  | 0d |  |
| 21 |  | Release Notes – Será desenvolvido a cada versão publicada do sistema | 6h | 2013-05-09 08:00 | 2013-05-13 14:00 | 20 |  | 0d |  |
| 22 | 5 | **Especificações e diagrama de caso de uso** | 14.5d | 2013-03-20 08:00 | 2013-04-09 09:00 |  |  | 12d |  |
| 23 |  | Informar Empresa Contábil | 1h | 2013-03-20 08:00 | 2013-03-20 09:00 | 12 |  | 64d |  |
| 24 |  | Inserir Cliente | 4h | 2013-03-20 13:00 | 2013-03-22 09:00 | 23 |  | 64d |  |
| 25 |  | Manter Cliente | 4h | 2013-03-22 13:00 | 2013-03-26 09:00 | 24 |  | 64d |  |
| 26 |  | Inserir Contador | 1h | 2013-03-26 13:00 | 2013-03-26 14:00 | 25 |  | 64d |  |
| 27 |  | Manter Contador | 2h | 2013-03-27 08:00 | 2013-03-27 14:00 | 26 |  | 64d |  |
| 28 |  | Inserir Usuário | 1h | 2013-03-28 08:00 | 2013-03-28 09:00 | 27 |  | 64d |  |
| 29 |  | Manter Usuário | 2h | 2013-03-28 13:00 | 2013-03-29 09:00 | 28 |  | 64d |  |
| 30 |  | Inserir Setor | 3h | 2013-03-29 13:00 | 2013-04-01 14:00 | 29 |  | 64d |  |
| 31 |  | Manter Setor | 4h | 2013-04-02 08:00 | 2013-04-03 14:00 | 30 |  | 64d |  |
| 32 |  | Informar Agenda | 16h | 2013-03-25 08:00 | 2013-04-03 14:00 | 10 |  | 41.75d |  |
| 33 |  | Inserir Despesa | 1h | 2013-04-04 08:00 | 2013-04-04 09:00 | 31 |  | 64d |  |
| 34 |  | Manter Despesa | 2h | 2013-04-04 13:00 | 2013-04-05 09:00 | 33 |  | 64d |  |
| 35 |  | Inserir Receita | 1h | 2013-04-05 13:00 | 2013-04-05 14:00 | 34 |  | 64d |  |
| 36 |  | Manter Receita | 2h | 2013-04-08 08:00 | 2013-04-08 14:00 | 35 |  | 64d |  |
| 37 |  | Efetuar Login | 1h | 2013-04-09 08:00 | 2013-04-09 09:00 | 36 |  | 64d |  |
| 38 |  | Manual de utilização | 24h | 2013-05-14 08:00 | 2013-05-29 14:00 | 21 |  | 0d |  |
| 39 | 7 | **Arquitetura** | 61d | 2013-03-12 08:00 | 2013-06-04 14:00 |  |  | 0d |  |
| 40 |  | Definição e Implementação (Feito no planejamento) | 0h | 2013-03-12 08:00 | 2013-03-12 08:00 |  |  | 46d |  |
| 41 |  | Layout de Telas (Feito no planejamento) | 0h | 2013-03-12 08:00 | 2013-03-12 08:00 |  |  | 46d |  |
| 42 |  | Documento de Arquitetura | 6h | 2013-03-28 08:00 | 2013-04-01 14:00 | 13 |  | 68.5d |  |
| 43 | 7.4 | **Diagramas UML** | 11.75d | 2013-03-22 08:00 | 2013-04-08 13:30 |  |  | 13.25d |  |
| 44 |  | Diagrama de Arquitetura - Revisão/Atualização | 2h | 2013-04-02 08:00 | 2013-04-02 14:00 | 42 |  | 68.5d |  |
| 45 | 7.4.2 | **Diagrama de Classes** | 9.5d | 2013-03-22 08:00 | 2013-04-04 09:00 |  |  | 14.75d |  |
| 46 |  | Efetuar Login - Revisão/Atualização | 0.5h | 2013-03-22 08:00 | 2013-03-22 08:30 | 5 |  | 36.75d |  |
| 47 |  | Inserir Empresa Contábil - Revisão/Atualização | 0.5h | 2013-03-22 08:30 | 2013-03-22 09:00 | 46 |  | 36.75d |  |
| 48 |  | Inserir Cliente - Revisão/Atualização | 2h | 2013-03-22 13:00 | 2013-03-25 09:00 | 47 |  | 36.75d |  |
| 49 |  | Manter Cliente - Criação | 2h | 2013-03-25 13:00 | 2013-03-26 09:00 | 48 |  | 36.75d |  |
| 50 |  | Inserir Despesa - Revisão/Atualização | 0.5h | 2013-03-26 13:00 | 2013-03-26 13:30 | 49 |  | 36.75d |  |
| 51 |  | Manter Despesa - Criação | 1h | 2013-03-26 13:30 | 2013-03-27 08:30 | 50 |  | 14.75d |  |
| 52 |  | Inserir Receita - Revisão/Atualização | 0.5h | 2013-03-27 08:30 | 2013-03-27 09:00 | 51 |  | 14.75d |  |
| 53 |  | Manter Receita - Criação | 1h | 2013-03-27 13:00 | 2013-03-27 14:00 | 52 |  | 38.25d |  |
| 54 |  | Inserir Contador - Criação | 1.5h | 2013-03-28 08:00 | 2013-03-28 13:30 | 53 |  | 38.25d |  |
| 55 |  | Manter Contador - Criação | 1.5h | 2013-03-28 13:30 | 2013-03-29 09:00 | 54 |  | 14.75d |  |
| 56 |  | Inserir Usuário - Criação | 1.5h | 2013-03-29 13:00 | 2013-04-01 08:30 | 55 |  | 38.25d |  |
| 57 |  | Manter Usuário - Criação | 1.5h | 2013-04-01 08:30 | 2013-04-01 14:00 | 56 |  | 14.75d |  |
| 58 |  | Inserir Setor - Criação | 1.5h | 2013-04-02 08:00 | 2013-04-02 13:30 | 57 |  | 38.25d |  |
| 59 |  | Manter Setor - Criação | 1.5h | 2013-04-02 13:30 | 2013-04-03 09:00 | 58 |  | 14.75d |  |
| 60 |  | Informar Agenda - Criação | 3h | 2013-04-03 08:00 | 2013-04-04 09:00 | 44 |  | 30d |  |
| 61 | 7.4.3 | **Diagrama de Seqüência** | 2.5d | 2013-04-04 08:00 | 2013-04-08 09:00 |  |  | 7.25d |  |
| 62 |  | Efetuar Login - Revisão/Atualização | 0.5h | 2013-04-04 08:00 | 2013-04-04 08:30 | 32 |  | 41.75d |  |
| 63 |  | Inserir Cliente - Revisão/Atualização | 1h | 2013-04-04 08:30 | 2013-04-04 13:30 | 62 |  | 41.75d |  |
| 64 |  | Inserir Despesa - Revisão/Atualização | 0.5h | 2013-04-04 13:30 | 2013-04-04 14:00 | 63 |  | 41.75d |  |
| 65 |  | Inserir Receita - Revisão/Atualização | 0.5h | 2013-04-05 08:00 | 2013-04-05 08:30 | 64 |  | 41.75d |  |
| 66 |  | Inserir Empresa Contábil - Revisão/Atualização | 0.5h | 2013-04-05 08:30 | 2013-04-05 09:00 | 65 |  | 41.75d |  |
| 67 |  | Informar Agenda | 2h | 2013-04-05 13:00 | 2013-04-08 09:00 | 66 |  | 41.75d |  |
| 68 |  | Diagrama de Distribuição - Revisão/Atualização | 0.5h | 2013-04-08 13:00 | 2013-04-08 13:30 | 67 |  | 41.75d |  |
| 69 |  | Modelo de Banco de Dados - Revisão/Atualização | 6h | 2013-04-03 13:00 | 2013-04-08 09:00 | 59 |  | 38.25d |  |
| 70 | 7.6 | **Implementação** | 28d | 2013-04-04 13:00 | 2013-05-14 09:00 |  |  | 14.5d |  |

| ID | WBS | Task | Duration | Start | Finish | Predecessors | Total float |
| --- | --- | --- | --- | --- | --- | --- | --- |
| 71 |  | Efetuar Login | 4h | 2013-04-08 13:30 | 2013-04-10 13:30 | 68 | 39.25d |
| 72 |  | Inserir Empresa Contábil | 8h | 2013-04-09 13:00 | 2013-04-15 09:00 | 37 | 12d |
| 73 |  | Inserir Cliente | 16h | 2013-04-04 13:00 | 2013-04-16 09:00 | 60 | 30d |
| 74 |  | Manter Cliente | 18h | 2013-04-15 13:00 | 2013-04-26 09:00 | 72 | 12d |
| 75 |  | Inserir Despesa | 4h | 2013-04-26 13:00 | 2013-04-30 09:00 | 74 | 12d |
| 76 |  | Manter Despesa | 6h | 2013-04-30 13:00 | 2013-05-03 09:00 | 75 | 12d |
| 77 |  | Inserir Receita | 4h | 2013-04-08 13:30 | 2013-04-10 13:30 | 68 | 12.25d |
| 78 |  | Manter Receita | 6h | 2013-04-10 13:30 | 2013-04-15 13:30 | 77 | 12.25d |
| 79 |  | Inserir Contador | 4h | 2013-04-15 13:30 | 2013-04-17 13:30 | 78 | 12.25d |
| 80 |  | Manter Contador | 6h | 2013-04-17 13:30 | 2013-04-22 13:30 | 79 | 12.25d |
| 81 |  | Inserir Usuário | 6h | 2013-04-22 13:30 | 2013-04-25 13:30 | 80 | 12.25d |
| 82 |  | Manter Usuário | 8h | 2013-04-25 13:30 | 2013-05-01 13:30 | 81 | 12.25d |
| 83 |  | Inserir Setor | 6h | 2013-05-01 13:30 | 2013-05-06 13:30 | 82 | 12.25d |
| 84 |  | Manter Setor | 8h | 2013-05-06 13:30 | 2013-05-10 13:30 | 83 | 12.25d |
| 85 |  | Informar Agenda | 40h | 2013-04-16 13:00 | 2013-05-14 09:00 | 73 | 15.5d |
| 86 |  | Manual de instalação (implantação) - Criação | 8h | 2013-05-30 08:00 | 2013-06-04 14:00 | 38 | 0d |
| 87 | 7.8 | **Testes** | 29.5d | 2013-04-08 13:00 | 2013-05-17 14:00 |  | 12d |
| 88 |  | Plano de testes | 4h | 2013-05-03 13:00 | 2013-05-07 09:00 | 76 | 12d |
| 89 |  | Projeto de testes | 4h | 2013-04-08 13:00 | 2013-04-10 09:00 | 69 | 38.25d |
| 90 | 7.8.3 | **Registros dos testes** | 27.5d | 2013-04-10 13:00 | 2013-05-17 14:00 |  | 12d |
| 91 | 7.8.3.1 | **Casos de Teste** | 10.25d | 2013-04-10 13:00 | 2013-04-24 13:30 |  | 14.75d |
| 92 |  | Efetuar Login | 0.5h | 2013-04-10 13:00 | 2013-04-10 13:30 | 89 | 38.25d |
| 93 |  | Inserir Empresa Contábil | 2h | 2013-04-10 13:30 | 2013-04-11 13:30 | 92 | 14.75d |
| 94 |  | Inserir Cliente | 2h | 2013-04-11 13:30 | 2013-04-12 13:30 | 93 | 14.75d |
| 95 |  | Manter Cliente | 2h | 2013-04-12 13:30 | 2013-04-15 13:30 | 94 | 14.75d |
| 96 |  | Inserir Despesa | 1h | 2013-04-15 13:30 | 2013-04-16 08:30 | 95 | 14.75d |
| 97 |  | Manter Despesa | 1h | 2013-04-16 08:30 | 2013-04-16 13:30 | 96 | 14.75d |
| 98 |  | Inserir Receita | 1h | 2013-04-16 13:30 | 2013-04-17 08:30 | 97 | 14.75d |
| 99 |  | Manter Receita | 1h | 2013-04-17 08:30 | 2013-04-17 13:30 | 98 | 14.75d |
| 100 |  | Inserir Contador | 1h | 2013-04-17 13:30 | 2013-04-18 08:30 | 99 | 14.75d |
| 101 |  | Manter Contador | 1h | 2013-04-18 08:30 | 2013-04-18 13:30 | 100 | 14.75d |
| 102 |  | Inserir Usuário | 1h | 2013-04-18 13:30 | 2013-04-19 08:30 | 101 | 14.75d |
| 103 |  | Manter Usuário | 1h | 2013-04-19 08:30 | 2013-04-19 13:30 | 102 | 14.75d |
| 104 |  | Inserir Setor | 1h | 2013-04-19 13:30 | 2013-04-22 08:30 | 103 | 14.75d |
| 105 |  | Manter Setor | 1h | 2013-04-22 08:30 | 2013-04-22 13:30 | 104 | 14.75d |
| 106 |  | Informar Agenda | 4h | 2013-04-22 13:30 | 2013-04-24 13:30 | 105 | 14.75d |
| 107 | 7.8.3.2 | **Automatização de Testes** | 13d | 2013-04-24 13:30 | 2013-05-13 13:30 |  | 12.25d |
| 108 |  | Efetuar Login | 0.5h | 2013-04-24 13:30 | 2013-04-24 14:00 | 106 | 38.25d |
| 109 |  | Inserir Empresa Contábil | 2h | 2013-04-25 08:00 | 2013-04-25 14:00 | 108 | 38.25d |
| 110 |  | Inserir Cliente | 2h | 2013-04-26 08:00 | 2013-04-26 14:00 | 109 | 38.25d |
| 111 |  | Manter Cliente | 2h | 2013-04-29 08:00 | 2013-04-29 14:00 | 110 | 38.25d |
| 112 |  | Inserir Despesa | 1h | 2013-05-10 13:30 | 2013-05-13 08:30 | 84 | 12.25d |
| 113 |  | Manter Despesa | 1h | 2013-05-13 08:30 | 2013-05-13 13:30 | 112 | 12.25d |
| 114 |  | Inserir Receita | 1h | 2013-05-07 13:00 | 2013-05-07 14:00 | 88 | 12d |
| 115 |  | Manter Receita | 1h | 2013-05-08 08:00 | 2013-05-08 09:00 | 114 | 12d |
| 116 |  | Inserir Contador | 1h | 2013-05-08 13:00 | 2013-05-08 14:00 | 115 | 12d |
| 117 |  | Manter Contador | 1h | 2013-05-09 08:00 | 2013-05-09 09:00 | 116 | 12d |
| 118 |  | Inserir Usuário | 1h | 2013-05-09 13:00 | 2013-05-09 14:00 | 117 | 12d |
| 119 |  | Manter Usuário | 1h | 2013-05-10 08:00 | 2013-05-10 09:00 | 118 | 12d |
| 120 |  | Inserir Setor | 1h | 2013-04-30 08:00 | 2013-04-30 09:00 | 111 | 38.25d |
| 121 |  | Manter Setor | 1h | 2013-04-30 13:00 | 2013-04-30 14:00 | 120 | 38.25d |
| 122 |  | Informar Agenda | 4h | 2013-05-01 08:00 | 2013-05-02 14:00 | 121 | 38.25d |
| 123 | 7.8.3.3 | **Execução de Testes** | 10.75d | 2013-05-03 08:00 | 2013-05-17 13:30 |  | 12.25d |
| 124 |  | Efetuar Login | 0.5h | 2013-05-03 08:00 | 2013-05-03 08:30 | 122 | 38.25d |
| 125 |  | Inserir Empresa Contábil | 2h | 2013-05-03 08:30 | 2013-05-06 08:30 | 124 | 38.25d |
| 126 |  | Inserir Cliente | 2h | 2013-05-06 08:30 | 2013-05-07 08:30 | 125 | 38.25d |
| 127 |  | Manter Cliente | 2h | 2013-05-13 13:30 | 2013-05-14 13:30 | 113 | 12.25d |
| 128 |  | Inserir Despesa | 1h | 2013-05-14 13:30 | 2013-05-15 08:30 | 127 | 12.25d |
| 129 |  | Manter Despesa | 1h | 2013-05-15 08:30 | 2013-05-15 13:30 | 128 | 12.25d |
| 130 |  | Inserir Receita | 1h | 2013-05-15 13:30 | 2013-05-16 08:30 | 129 | 12.25d |
| 131 |  | Manter Receita | 1h | 2013-05-16 08:30 | 2013-05-16 13:30 | 130 | 12.25d |
| 132 |  | Inserir Contador | 1h | 2013-05-16 13:30 | 2013-05-17 08:30 | 131 | 12.25d |
| 133 |  | Manter Contador | 1h | 2013-05-17 08:30 | 2013-05-17 13:30 | 132 | 12.25d |
| 134 |  | Inserir Usuário | 1h | 2013-05-10 13:00 | 2013-05-10 14:00 | 119 | 12d |
| 135 |  | Manter Usuário | 1h | 2013-05-13 08:00 | 2013-05-13 09:00 | 134 | 16.5d |
| 136 |  | Inserir Setor | 1h | 2013-05-13 08:00 | 2013-05-13 09:00 | 134 | 12d |
| 137 |  | Manter Setor | 1h | 2013-05-13 13:00 | 2013-05-13 14:00 | 136 | 12d |
| 138 |  | Informar Agenda | 4h | 2013-05-07 08:30 | 2013-05-09 08:30 | 126 | 38.25d |
| 139 |  | Teste Integração | 8h | 2013-05-09 08:30 | 2013-05-15 08:30 | 138 | 14.75d |
| 140 |  | Teste Integração | 8h | 2013-05-14 08:00 | 2013-05-17 14:00 | 137 | 12d |

## Version 2 (saved 2013-03-26)

Note of the change: RM02: Atualização do cronograma com as atividades finalizadas.

Last finish 2013-06-04 → 2013-05-23 (-12d). Complete tasks 0 → 10.

Removed: 14 Levantamento e Criação da Arquitetura

Changed:

| ID | Task | Start | Finish | Duration | Complete | Total float | Predecessors | Other |
| --- | --- | --- | --- | --- | --- | --- | --- | --- |
| 1 | Ata de Reunião 04/03 | 2013-03-05 08:00 A | 2013-03-05 14:00 A |  | 0% → 100% | 88.5d → none |  |  |
| 2 | Ata de Reunião 11/03 | 2013-03-12 08:00 A | 2013-03-12 14:00 A |  | 0% → 100% | 60d → none |  |  |
| 3 | **Planejamento** |  | 2013-04-02 14:00 → 2013-03-27 14:00 (-6d) | 16d → 12d | 2% → 67% | 16.5d → 41d |  |  |
| 4 | Criação do Cronograma | 2013-03-12 08:00 A | 2013-03-14 14:00 A |  | 0% → 100% | 14.75d → none |  |  |
| 5 | Plano de Gerência de Riscos | 2013-03-21 08:00 → 2013-03-19 08:00 (-2d) | 2013-03-21 14:00 → 2013-03-19 14:00 (-2d) |  |  | 36.75d → 8.75d |  |  |
| 6 | Criação da Sprint de Março | 2013-03-15 08:00 A | 2013-03-20 14:00 → 2013-03-18 14:00 A (-2d) | 6h → 2h | 0% → 100% | 36.75d → none |  | was named Criação do Cronograma |
| 7 | Criação do Cronograma |  | 2013-03-14 14:00 A |  | 33% → 100% | 7.25d → none |  |  |
| 8 | Documento de Visão (Planejamento do Projeto) | 2013-03-15 08:00 A | 2013-03-18 14:00 A |  | 0% → 100% | 41.75d → none |  |  |
| 9 | Termo de Abertura | 2013-03-19 08:00 A | 2013-03-20 14:00 A |  | 0% → 100% | 41.75d → none |  |  |
| 10 | Definição das metodologias | 2013-03-21 08:00 A |  |  | 0% → 60% | 41.75d → 4.25d |  |  |
| 11 | Glossário | 2013-03-13 08:00 A | 2013-03-18 14:00 A |  | 0% → 100% | 64d → none |  |  |
| 12 | Documento de Requisitos | 2013-03-19 08:00 A | 2013-03-19 14:00 A |  | 0% → 100% | 64d → none |  |  |
| 13 | Levantamento e Criação da Arquitetura | 2013-03-12 08:00 A |  |  | 0% → 60% | 15.5d → 7.5d |  |  |
| 14 | Layout de Telas | 2013-03-18 08:00 → 2013-03-12 08:00 A (-6d) | 2013-04-02 14:00 → 2013-03-21 14:00 (-12d) | 24h → 16h | 0% → 20% | 0d → 45d | Levantamento e Criação da Arquitetura → none |  |
| 15 | **Gerencia de Configuração** | 2013-04-03 08:00 → 2013-03-22 08:00 A (-12d) | 2013-05-13 14:00 → 2013-05-01 14:00 (-12d) |  | 0% → 64% |  |  |  |
| 16 | Desenvolvimento do Plano de Configuração | 2013-04-03 08:00 → 2013-03-22 08:00 A (-12d) | 2013-04-08 14:00 → 2013-03-27 14:00 A (-12d) |  | 0% → 100% | 0d → none |  |  |
| 17 | Criação, gerenciamento e organização do Controle de Versão – Subversion | 2013-04-09 08:00 → 2013-03-28 08:00 A (-12d) | 2013-04-18 14:00 → 2013-04-08 14:00 (-10d) |  | 0% → 80% | 0d → 8.2d |  |  |
| 18 | - Criação, gerenciamento e organização do Controle de Mudanças – Redmine | 2013-04-19 08:00 → 2013-04-09 08:00 A (-10d) | 2013-04-30 14:00 → 2013-04-18 14:00 (-12d) |  | 0% → 80% | 0d → 1.8d |  |  |
| 19 | Auditoria do repositório (cumprimento dos padrões, respeito à organização, etc.) | 2013-05-01 08:00 → 2013-04-19 08:00 A (-12d) | 2013-05-08 14:00 → 2013-04-26 14:00 (-12d) |  | 0% → 20% | 0d → 0.6d |  |  |
| 20 | Release Notes – Será desenvolvido a cada versão publicada do sistema | 2013-05-09 08:00 → 2013-04-29 08:00 A (-10d) | 2013-05-13 14:00 → 2013-05-01 14:00 (-12d) |  | 0% → 20% |  |  |  |
| 21 | **Especificações e diagrama de caso de uso** | 2013-03-20 08:00 A |  |  | 0% → 15% | 12d → 4d |  |  |
| 22 | Informar Empresa Contábil | 2013-03-20 08:00 A |  |  | 0% → 80% | 64d → 7d |  |  |
| 23 | Inserir Cliente | 2013-03-20 13:00 A |  |  | 0% → 60% | 64d → 5.8d |  |  |
| 24 | Manter Cliente | 2013-03-22 13:00 A |  |  | 0% → 60% | 64d → 4.6d |  |  |
| 25 | Inserir Contador | 2013-03-26 13:00 A |  |  | 0% → 60% | 64d → 4.3d |  |  |
| 27 | Inserir Usuário | 2013-03-28 08:00 A |  |  | 0% → 60% | 64d → 4d |  |  |
| 37 | Manual de utilização | 2013-05-14 08:00 → 2013-05-02 08:00 (-12d) | 2013-05-29 14:00 → 2013-05-17 14:00 (-12d) |  |  |  |  |  |
| 38 | **Arquitetura** | 2013-03-12 08:00 A | 2013-06-04 14:00 → 2013-05-23 14:00 (-12d) | 61d → 53d |  |  |  |  |
| 42 | **Diagramas UML** | 2013-03-22 08:00 → 2013-03-20 08:00 A (-2d) |  | 11.75d → 13.75d | 0% → 4% | 13.25d → 5.25d |  |  |
| 43 | Diagrama de Arquitetura - Revisão/Atualização | 2013-04-02 08:00 A |  |  | 0% → 60% | 68.5d → 7.5d |  |  |
| 44 | **Diagrama de Classes** | 2013-03-22 08:00 → 2013-03-20 08:00 (-2d) |  | 9.5d → 11.5d |  | 14.75d → 7.5d |  |  |
| 45 | Efetuar Login - Revisão/Atualização | 2013-03-22 08:00 → 2013-03-20 08:00 (-2d) | 2013-03-22 08:30 → 2013-03-20 08:30 (-2d) |  |  | 36.75d → 8.75d |  |  |
| 46 | Inserir Empresa Contábil - Revisão/Atualização | 2013-03-22 08:30 → 2013-03-20 08:30 (-2d) | 2013-03-22 09:00 → 2013-03-20 09:00 (-2d) |  |  | 36.75d → 8.75d |  |  |
| 47 | Inserir Cliente - Revisão/Atualização | 2013-03-22 13:00 → 2013-03-20 13:00 (-2d) | 2013-03-25 09:00 → 2013-03-21 09:00 (-4d) |  |  | 36.75d → 8.75d |  |  |
| 48 | Manter Cliente - Criação | 2013-03-25 13:00 → 2013-03-21 13:00 (-4d) | 2013-03-26 09:00 → 2013-03-22 09:00 (-4d) |  |  | 36.75d → 8.75d |  |  |
| 49 | Inserir Despesa - Revisão/Atualização | 2013-03-26 13:00 → 2013-03-22 13:00 (-4d) | 2013-03-26 13:30 → 2013-03-22 13:30 (-4d) |  |  | 36.75d → 8.75d |  |  |
| 50 | Manter Despesa - Criação | 2013-03-26 13:30 → 2013-03-22 13:30 (-4d) | 2013-03-27 08:30 → 2013-03-25 08:30 (-2d) |  |  | 14.75d → 8.75d |  |  |
| 51 | Inserir Receita - Revisão/Atualização | 2013-03-27 08:30 → 2013-03-25 08:30 (-2d) | 2013-03-27 09:00 → 2013-03-25 09:00 (-2d) |  |  | 14.75d → 8.75d |  |  |
| 52 | Manter Receita - Criação | 2013-03-27 13:00 → 2013-03-25 13:00 (-2d) | 2013-03-27 14:00 → 2013-03-25 14:00 (-2d) |  |  | 38.25d → 8.75d |  |  |
| 53 | Inserir Contador - Criação | 2013-03-28 08:00 → 2013-03-26 08:00 (-2d) | 2013-03-28 13:30 → 2013-03-26 13:30 (-2d) |  |  | 38.25d → 8.75d |  |  |
| 54 | Manter Contador - Criação | 2013-03-28 13:30 → 2013-03-26 13:30 (-2d) | 2013-03-29 09:00 → 2013-03-27 09:00 (-2d) |  |  | 14.75d → 8.75d |  |  |
| 55 | Inserir Usuário - Criação | 2013-03-29 13:00 → 2013-03-27 13:00 (-2d) | 2013-04-01 08:30 → 2013-03-28 08:30 (-4d) |  |  | 38.25d → 8.75d |  |  |
| 56 | Manter Usuário - Criação | 2013-04-01 08:30 → 2013-03-28 08:30 (-4d) | 2013-04-01 14:00 → 2013-03-28 14:00 (-4d) |  |  | 14.75d → 8.75d |  |  |
| 57 | Inserir Setor - Criação | 2013-04-02 08:00 → 2013-03-29 08:00 (-4d) | 2013-04-02 13:30 → 2013-03-29 13:30 (-4d) |  |  | 38.25d → 8.75d |  |  |
| 58 | Manter Setor - Criação | 2013-04-02 13:30 → 2013-03-29 13:30 (-4d) | 2013-04-03 09:00 → 2013-04-01 09:00 (-2d) |  |  | 14.75d → 8.75d |  |  |
| 68 | Modelo de Banco de Dados - Revisão/Atualização | 2013-04-03 13:00 → 2013-04-01 13:00 (-2d) | 2013-04-08 09:00 → 2013-04-04 09:00 (-4d) |  |  | 38.25d → 8.75d |  |  |
| 85 | Manual de instalação (implantação) - Criação | 2013-05-30 08:00 → 2013-05-20 08:00 (-10d) | 2013-06-04 14:00 → 2013-05-23 14:00 (-12d) |  |  |  |  |  |
| 86 | **Testes** | 2013-04-08 13:00 → 2013-04-04 13:00 (-4d) |  | 29.5d → 31.5d |  | 12d → 4d |  |  |
| 88 | Projeto de testes | 2013-04-08 13:00 → 2013-04-04 13:00 (-4d) | 2013-04-10 09:00 → 2013-04-08 09:00 (-2d) |  |  | 38.25d → 8.75d |  |  |
| 89 | **Registros dos testes** | 2013-04-10 13:00 → 2013-04-08 13:00 (-2d) |  | 27.5d → 29.5d |  | 12d → 4d |  |  |
| 90 | **Casos de Teste** | 2013-04-10 13:00 → 2013-04-08 13:00 (-2d) | 2013-04-24 13:30 → 2013-04-22 13:30 (-2d) |  |  | 14.75d → 8.75d |  |  |
| 91 | Efetuar Login | 2013-04-10 13:00 → 2013-04-08 13:00 (-2d) | 2013-04-10 13:30 → 2013-04-08 13:30 (-2d) |  |  | 38.25d → 8.75d |  |  |
| 92 | Inserir Empresa Contábil | 2013-04-10 13:30 → 2013-04-08 13:30 (-2d) | 2013-04-11 13:30 → 2013-04-09 13:30 (-2d) |  |  | 14.75d → 8.75d |  |  |
| 93 | Inserir Cliente | 2013-04-11 13:30 → 2013-04-09 13:30 (-2d) | 2013-04-12 13:30 → 2013-04-10 13:30 (-2d) |  |  | 14.75d → 8.75d |  |  |
| 94 | Manter Cliente | 2013-04-12 13:30 → 2013-04-10 13:30 (-2d) | 2013-04-15 13:30 → 2013-04-11 13:30 (-4d) |  |  | 14.75d → 8.75d |  |  |
| 95 | Inserir Despesa | 2013-04-15 13:30 → 2013-04-11 13:30 (-4d) | 2013-04-16 08:30 → 2013-04-12 08:30 (-4d) |  |  | 14.75d → 8.75d |  |  |
| 96 | Manter Despesa | 2013-04-16 08:30 → 2013-04-12 08:30 (-4d) | 2013-04-16 13:30 → 2013-04-12 13:30 (-4d) |  |  | 14.75d → 8.75d |  |  |
| 97 | Inserir Receita | 2013-04-16 13:30 → 2013-04-12 13:30 (-4d) | 2013-04-17 08:30 → 2013-04-15 08:30 (-2d) |  |  | 14.75d → 8.75d |  |  |
| 98 | Manter Receita | 2013-04-17 08:30 → 2013-04-15 08:30 (-2d) | 2013-04-17 13:30 → 2013-04-15 13:30 (-2d) |  |  | 14.75d → 8.75d |  |  |
| 99 | Inserir Contador | 2013-04-17 13:30 → 2013-04-15 13:30 (-2d) | 2013-04-18 08:30 → 2013-04-16 08:30 (-2d) |  |  | 14.75d → 8.75d |  |  |
| 100 | Manter Contador | 2013-04-18 08:30 → 2013-04-16 08:30 (-2d) | 2013-04-18 13:30 → 2013-04-16 13:30 (-2d) |  |  | 14.75d → 8.75d |  |  |
| 101 | Inserir Usuário | 2013-04-18 13:30 → 2013-04-16 13:30 (-2d) | 2013-04-19 08:30 → 2013-04-17 08:30 (-2d) |  |  | 14.75d → 8.75d |  |  |
| 102 | Manter Usuário | 2013-04-19 08:30 → 2013-04-17 08:30 (-2d) | 2013-04-19 13:30 → 2013-04-17 13:30 (-2d) |  |  | 14.75d → 8.75d |  |  |
| 103 | Inserir Setor | 2013-04-19 13:30 → 2013-04-17 13:30 (-2d) | 2013-04-22 08:30 → 2013-04-18 08:30 (-4d) |  |  | 14.75d → 8.75d |  |  |
| 104 | Manter Setor | 2013-04-22 08:30 → 2013-04-18 08:30 (-4d) | 2013-04-22 13:30 → 2013-04-18 13:30 (-4d) |  |  | 14.75d → 8.75d |  |  |
| 105 | Informar Agenda | 2013-04-22 13:30 → 2013-04-18 13:30 (-4d) | 2013-04-24 13:30 → 2013-04-22 13:30 (-2d) |  |  | 14.75d → 8.75d |  |  |
| 106 | **Automatização de Testes** | 2013-04-24 13:30 → 2013-04-22 13:30 (-2d) |  | 13d → 15d |  | 12.25d → 4.25d |  |  |
| 107 | Efetuar Login | 2013-04-24 13:30 → 2013-04-22 13:30 (-2d) | 2013-04-24 14:00 → 2013-04-22 14:00 (-2d) |  |  | 38.25d → 8.75d |  |  |
| 108 | Inserir Empresa Contábil | 2013-04-25 08:00 → 2013-04-23 08:00 (-2d) | 2013-04-25 14:00 → 2013-04-23 14:00 (-2d) |  |  | 38.25d → 8.75d |  |  |
| 109 | Inserir Cliente | 2013-04-26 08:00 → 2013-04-24 08:00 (-2d) | 2013-04-26 14:00 → 2013-04-24 14:00 (-2d) |  |  | 38.25d → 8.75d |  |  |

| ID | Task | Start | Finish | Duration | Total float |
| --- | --- | --- | --- | --- | --- |
| 110 | Manter Cliente | 2013-04-29 08:00 → 2013-04-25 08:00 (-4d) | 2013-04-29 14:00 → 2013-04-25 14:00 (-4d) |  | 38.25d → 8.75d |
| 119 | Inserir Setor | 2013-04-30 08:00 → 2013-04-26 08:00 (-4d) | 2013-04-30 09:00 → 2013-04-26 09:00 (-4d) |  | 38.25d → 8.75d |
| 120 | Manter Setor | 2013-04-30 13:00 → 2013-04-26 13:00 (-4d) | 2013-04-30 14:00 → 2013-04-26 14:00 (-4d) |  | 38.25d → 8.75d |
| 121 | Informar Agenda | 2013-05-01 08:00 → 2013-04-29 08:00 (-2d) | 2013-05-02 14:00 → 2013-04-30 14:00 (-2d) |  | 38.25d → 8.75d |
| 122 | **Execução de Testes** | 2013-05-03 08:00 → 2013-05-01 08:00 (-2d) |  | 10.75d → 12.75d | 12.25d → 4.25d |
| 123 | Efetuar Login | 2013-05-03 08:00 → 2013-05-01 08:00 (-2d) | 2013-05-03 08:30 → 2013-05-01 08:30 (-2d) |  | 38.25d → 8.75d |
| 124 | Inserir Empresa Contábil | 2013-05-03 08:30 → 2013-05-01 08:30 (-2d) | 2013-05-06 08:30 → 2013-05-02 08:30 (-4d) |  | 38.25d → 8.75d |
| 125 | Inserir Cliente | 2013-05-06 08:30 → 2013-05-02 08:30 (-4d) | 2013-05-07 08:30 → 2013-05-03 08:30 (-4d) |  | 38.25d → 8.75d |
| 137 | Informar Agenda | 2013-05-07 08:30 → 2013-05-03 08:30 (-4d) | 2013-05-09 08:30 → 2013-05-07 08:30 (-2d) |  | 38.25d → 8.75d |
| 138 | Teste Integração | 2013-05-09 08:30 → 2013-05-07 08:30 (-2d) | 2013-05-15 08:30 → 2013-05-13 08:30 (-2d) |  | 14.75d → 8.75d |

## Version 3 (saved 2013-03-30)

Note of the change: RM02: Atualização do Cronograma.

Last finish stays 2013-05-23. Complete tasks 10 → 12.

Changed:

| ID | Task | Start | Finish | Duration | Complete | Total float | Other |
| --- | --- | --- | --- | --- | --- | --- | --- |
| 3 | **Planejamento** |  |  |  | 67% → 69% |  |  |
| 10 | Definição das metodologias |  | 2013-03-22 14:00 A |  | 60% → 100% | 4.25d → none |  |
| 21 | **Especificações e diagrama de caso de uso** |  |  |  | 15% → 21% | 4d → 64d |  |
| 31 | Informar Agenda |  | 2013-04-03 14:00 → 2013-03-26 14:00 (-8d) | 16h → 4h |  | 41.75d → 42d |  |
| 38 | **Arquitetura** |  |  |  | 0% → 3% | 0d → 30.5d |  |
| 42 | **Diagramas UML** |  | 2013-04-08 13:30 → 2013-04-04 09:00 (-4d) | 13.75d → 11.5d |  | 5.25d → 44d |  |
| 60 | **Diagrama de Seqüência** | 2013-04-04 08:00 → 2013-03-27 08:00 (-8d) | 2013-04-08 09:00 → 2013-03-29 09:00 (-10d) |  |  | 4.25d → 10.25d |  |
| 61 | Efetuar Login - Revisão/Atualização | 2013-04-04 08:00 → 2013-03-27 08:00 (-8d) | 2013-04-04 08:30 → 2013-03-27 08:30 (-8d) |  |  | 41.75d → 47.75d |  |
| 62 | Inserir Cliente - Revisão/Atualização | 2013-04-04 08:30 → 2013-03-27 08:30 (-8d) | 2013-04-04 13:30 → 2013-03-27 13:30 (-8d) |  |  | 41.75d → 47.75d |  |
| 63 | Inserir Despesa - Revisão/Atualização | 2013-04-04 13:30 → 2013-03-27 13:30 (-8d) | 2013-04-04 14:00 → 2013-03-27 14:00 (-8d) |  |  | 41.75d → 47.75d |  |
| 64 | Inserir Receita - Revisão/Atualização | 2013-04-05 08:00 → 2013-03-28 08:00 (-8d) | 2013-04-05 08:30 → 2013-03-28 08:30 (-8d) |  |  | 41.75d → 47.75d |  |
| 65 | Inserir Empresa Contábil - Revisão/Atualização | 2013-04-05 08:30 → 2013-03-28 08:30 (-8d) | 2013-04-05 09:00 → 2013-03-28 09:00 (-8d) |  |  | 41.75d → 47.75d |  |
| 66 | Informar Agenda | 2013-04-05 13:00 → 2013-03-28 13:00 (-8d) | 2013-04-08 09:00 → 2013-03-29 09:00 (-10d) |  |  | 41.75d → 47.75d |  |
| 67 | Diagrama de Distribuição - Revisão/Atualização | 2013-04-08 13:00 → 2013-03-29 13:00 (-10d) | 2013-04-08 13:30 → 2013-03-29 13:30 (-10d) |  |  | 41.75d → 47.75d |  |
| 68 | Modelo de Banco de Dados - Revisão/Atualização | 2013-04-01 13:00 A | 2013-04-04 09:00 → 2013-04-05 09:00 A (+1d) | 6h → 8h | 0% → 100% | 8.75d → none |  |
| 69 | **Implementação** | 2013-04-04 13:00 → 2013-03-29 13:30 (-6d) |  | 28d → 31.75d |  | 6.5d → 10.25d |  |
| 70 | Efetuar Login | 2013-04-08 13:30 → 2013-03-29 13:30 (-10d) | 2013-04-10 13:30 → 2013-04-02 13:30 (-8d) |  |  | 31.25d → 37.25d | resources Rômulo Aurélio → Mariana Victor |
| 76 | Inserir Receita | 2013-04-08 13:30 → 2013-03-29 13:30 (-10d) | 2013-04-10 13:30 → 2013-04-02 13:30 (-8d) |  |  | 4.25d → 10.25d |  |
| 77 | Manter Receita | 2013-04-10 13:30 → 2013-04-02 13:30 (-8d) | 2013-04-15 13:30 → 2013-04-05 13:30 (-10d) |  |  | 4.25d → 10.25d |  |
| 78 | Inserir Contador | 2013-04-15 13:30 → 2013-04-05 13:30 (-10d) | 2013-04-17 13:30 → 2013-04-09 13:30 (-8d) |  |  | 4.25d → 10.25d |  |
| 79 | Manter Contador | 2013-04-17 13:30 → 2013-04-09 13:30 (-8d) | 2013-04-22 13:30 → 2013-04-12 13:30 (-10d) |  |  | 4.25d → 10.25d |  |
| 80 | Inserir Usuário | 2013-04-22 13:30 → 2013-04-12 13:30 (-10d) | 2013-04-25 13:30 → 2013-04-17 13:30 (-8d) |  |  | 4.25d → 10.25d |  |
| 81 | Manter Usuário | 2013-04-25 13:30 → 2013-04-17 13:30 (-8d) | 2013-05-01 13:30 → 2013-04-23 13:30 (-8d) |  |  | 4.25d → 10.25d |  |
| 82 | Inserir Setor | 2013-05-01 13:30 → 2013-04-23 13:30 (-8d) | 2013-05-06 13:30 → 2013-04-26 13:30 (-10d) |  |  | 4.25d → 10.25d |  |
| 83 | Manter Setor | 2013-05-06 13:30 → 2013-04-26 13:30 (-10d) | 2013-05-10 13:30 → 2013-05-02 13:30 (-8d) |  |  | 4.25d → 10.25d |  |
| 86 | **Testes** | 2013-04-04 13:00 → 2013-04-05 13:00 (+1d) |  | 31.5d → 30.5d |  |  |  |
| 88 | Projeto de testes | 2013-04-04 13:00 → 2013-04-05 13:00 (+1d) | 2013-04-08 09:00 → 2013-04-09 09:00 (+1d) |  |  | 8.75d → 7.75d |  |
| 89 | **Registros dos testes** | 2013-04-08 13:00 → 2013-04-09 13:00 (+1d) |  | 29.5d → 28.5d |  |  |  |
| 90 | **Casos de Teste** | 2013-04-08 13:00 → 2013-04-09 13:00 (+1d) | 2013-04-22 13:30 → 2013-04-23 13:30 (+1d) |  |  | 8.75d → 7.75d |  |
| 91 | Efetuar Login | 2013-04-08 13:00 → 2013-04-09 13:00 (+1d) | 2013-04-08 13:30 → 2013-04-09 13:30 (+1d) |  |  | 8.75d → 7.75d |  |
| 92 | Inserir Empresa Contábil | 2013-04-08 13:30 → 2013-04-09 13:30 (+1d) | 2013-04-09 13:30 → 2013-04-10 13:30 (+1d) |  |  | 8.75d → 7.75d |  |
| 93 | Inserir Cliente | 2013-04-09 13:30 → 2013-04-10 13:30 (+1d) | 2013-04-10 13:30 → 2013-04-11 13:30 (+1d) |  |  | 8.75d → 7.75d |  |
| 94 | Manter Cliente | 2013-04-10 13:30 → 2013-04-11 13:30 (+1d) | 2013-04-11 13:30 → 2013-04-12 13:30 (+1d) |  |  | 8.75d → 7.75d |  |
| 95 | Inserir Despesa | 2013-04-11 13:30 → 2013-04-12 13:30 (+1d) | 2013-04-12 08:30 → 2013-04-15 08:30 (+3d) |  |  | 8.75d → 7.75d |  |
| 96 | Manter Despesa | 2013-04-12 08:30 → 2013-04-15 08:30 (+3d) | 2013-04-12 13:30 → 2013-04-15 13:30 (+3d) |  |  | 8.75d → 7.75d |  |
| 97 | Inserir Receita | 2013-04-12 13:30 → 2013-04-15 13:30 (+3d) | 2013-04-15 08:30 → 2013-04-16 08:30 (+1d) |  |  | 8.75d → 7.75d |  |
| 98 | Manter Receita | 2013-04-15 08:30 → 2013-04-16 08:30 (+1d) | 2013-04-15 13:30 → 2013-04-16 13:30 (+1d) |  |  | 8.75d → 7.75d |  |
| 99 | Inserir Contador | 2013-04-15 13:30 → 2013-04-16 13:30 (+1d) | 2013-04-16 08:30 → 2013-04-17 08:30 (+1d) |  |  | 8.75d → 7.75d |  |
| 100 | Manter Contador | 2013-04-16 08:30 → 2013-04-17 08:30 (+1d) | 2013-04-16 13:30 → 2013-04-17 13:30 (+1d) |  |  | 8.75d → 7.75d |  |
| 101 | Inserir Usuário | 2013-04-16 13:30 → 2013-04-17 13:30 (+1d) | 2013-04-17 08:30 → 2013-04-18 08:30 (+1d) |  |  | 8.75d → 7.75d |  |
| 102 | Manter Usuário | 2013-04-17 08:30 → 2013-04-18 08:30 (+1d) | 2013-04-17 13:30 → 2013-04-18 13:30 (+1d) |  |  | 8.75d → 7.75d |  |
| 103 | Inserir Setor | 2013-04-17 13:30 → 2013-04-18 13:30 (+1d) | 2013-04-18 08:30 → 2013-04-19 08:30 (+1d) |  |  | 8.75d → 7.75d |  |
| 104 | Manter Setor | 2013-04-18 08:30 → 2013-04-19 08:30 (+1d) | 2013-04-18 13:30 → 2013-04-19 13:30 (+1d) |  |  | 8.75d → 7.75d |  |
| 105 | Informar Agenda | 2013-04-18 13:30 → 2013-04-19 13:30 (+1d) | 2013-04-22 13:30 → 2013-04-23 13:30 (+1d) |  |  | 8.75d → 7.75d |  |
| 106 | **Automatização de Testes** | 2013-04-22 13:30 → 2013-04-23 13:30 (+1d) | 2013-05-13 13:30 → 2013-05-10 09:00 (-3d) | 15d → 12.75d |  | 4.25d → 5.5d |  |
| 107 | Efetuar Login | 2013-04-22 13:30 → 2013-04-23 13:30 (+1d) | 2013-04-22 14:00 → 2013-04-23 14:00 (+1d) |  |  | 8.75d → 7.75d |  |
| 108 | Inserir Empresa Contábil | 2013-04-23 08:00 → 2013-04-24 08:00 (+1d) | 2013-04-23 14:00 → 2013-04-24 14:00 (+1d) |  |  | 8.75d → 7.75d |  |
| 109 | Inserir Cliente | 2013-04-24 08:00 → 2013-04-25 08:00 (+1d) | 2013-04-24 14:00 → 2013-04-25 14:00 (+1d) |  |  | 8.75d → 7.75d |  |
| 110 | Manter Cliente | 2013-04-25 08:00 → 2013-04-26 08:00 (+1d) | 2013-04-25 14:00 → 2013-04-26 14:00 (+1d) |  |  | 8.75d → 7.75d |  |
| 111 | Inserir Despesa | 2013-05-10 13:30 → 2013-05-02 13:30 (-8d) | 2013-05-13 08:30 → 2013-05-03 08:30 (-10d) |  |  | 4.25d → 10.25d |  |
| 112 | Manter Despesa | 2013-05-13 08:30 → 2013-05-03 08:30 (-10d) | 2013-05-13 13:30 → 2013-05-03 13:30 (-10d) |  |  | 4.25d → 10.25d |  |
| 119 | Inserir Setor | 2013-04-26 08:00 → 2013-04-29 08:00 (+3d) | 2013-04-26 09:00 → 2013-04-29 09:00 (+3d) |  |  | 8.75d → 7.75d |  |
| 120 | Manter Setor | 2013-04-26 13:00 → 2013-04-29 13:00 (+3d) | 2013-04-26 14:00 → 2013-04-29 14:00 (+3d) |  |  | 8.75d → 7.75d |  |
| 121 | Informar Agenda | 2013-04-29 08:00 → 2013-04-30 08:00 (+1d) | 2013-04-30 14:00 → 2013-05-01 14:00 (+1d) |  |  | 8.75d → 7.75d |  |
| 122 | **Execução de Testes** | 2013-05-01 08:00 → 2013-05-02 08:00 (+1d) | 2013-05-17 13:30 → 2013-05-13 14:00 (-4d) | 12.75d → 8d |  | 4.25d → 7.75d |  |
| 123 | Efetuar Login | 2013-05-01 08:00 → 2013-05-02 08:00 (+1d) | 2013-05-01 08:30 → 2013-05-02 08:30 (+1d) |  |  | 8.75d → 7.75d |  |
| 124 | Inserir Empresa Contábil | 2013-05-01 08:30 → 2013-05-02 08:30 (+1d) | 2013-05-02 08:30 → 2013-05-03 08:30 (+1d) |  |  | 8.75d → 7.75d |  |
| 125 | Inserir Cliente | 2013-05-02 08:30 → 2013-05-03 08:30 (+1d) | 2013-05-03 08:30 → 2013-05-06 08:30 (+3d) |  |  | 8.75d → 7.75d |  |
| 126 | Manter Cliente | 2013-05-13 13:30 → 2013-05-03 13:30 (-10d) | 2013-05-14 13:30 → 2013-05-06 13:30 (-8d) |  |  | 4.25d → 10.25d |  |
| 127 | Inserir Despesa | 2013-05-14 13:30 → 2013-05-06 13:30 (-8d) | 2013-05-15 08:30 → 2013-05-07 08:30 (-8d) |  |  | 4.25d → 10.25d |  |
| 128 | Manter Despesa | 2013-05-15 08:30 → 2013-05-07 08:30 (-8d) | 2013-05-15 13:30 → 2013-05-07 13:30 (-8d) |  |  | 4.25d → 10.25d |  |
| 129 | Inserir Receita | 2013-05-15 13:30 → 2013-05-07 13:30 (-8d) | 2013-05-16 08:30 → 2013-05-08 08:30 (-8d) |  |  | 4.25d → 10.25d |  |
| 130 | Manter Receita | 2013-05-16 08:30 → 2013-05-08 08:30 (-8d) | 2013-05-16 13:30 → 2013-05-08 13:30 (-8d) |  |  | 4.25d → 10.25d |  |
| 131 | Inserir Contador | 2013-05-16 13:30 → 2013-05-08 13:30 (-8d) | 2013-05-17 08:30 → 2013-05-09 08:30 (-8d) |  |  | 4.25d → 10.25d |  |
| 132 | Manter Contador | 2013-05-17 08:30 → 2013-05-09 08:30 (-8d) | 2013-05-17 13:30 → 2013-05-09 13:30 (-8d) |  |  | 4.25d → 10.25d |  |
| 137 | Informar Agenda | 2013-05-03 08:30 → 2013-05-06 08:30 (+3d) | 2013-05-07 08:30 → 2013-05-08 08:30 (+1d) |  |  | 8.75d → 7.75d |  |
| 138 | Teste Integração | 2013-05-07 08:30 → 2013-05-08 08:30 (+1d) | 2013-05-13 08:30 → 2013-05-14 08:30 (+1d) |  |  | 8.75d → 7.75d |  |

## Version 4 (saved 2013-04-01)

Note of the change: RM02: Atualização do Cronograma.

Last finish stays 2013-05-23.

Changed:

| ID | Task | Start | Finish | Duration | Complete | Total float | Predecessors | Other |
| --- | --- | --- | --- | --- | --- | --- | --- | --- |
| 21 | **Especificações e diagrama de caso de uso** |  | 2013-04-09 09:00 → 2013-04-03 14:00 (-6d) | 14.5d → 11d | 21% → 26% | 64d → 13.25d |  |  |
| 29 | Inserir Setor | 2013-03-29 13:00 → 2013-03-29 09:00 | 2013-04-01 14:00 → 2013-03-29 09:00 (-3d) | 3h → 0h |  | 64d → 9d |  |  |
| 30 | Manter Setor | 2013-04-02 08:00 → 2013-03-29 09:00 (-4d) | 2013-04-03 14:00 → 2013-03-29 09:00 (-5d) | 4h → 0h |  | 64d → 9d |  |  |
| 32 | Inserir Despesa | 2013-04-04 08:00 → 2013-03-29 13:00 (-6d) | 2013-04-04 09:00 → 2013-03-29 14:00 (-6d) |  |  | 64d → 9d |  |  |
| 33 | Manter Despesa | 2013-04-04 13:00 → 2013-04-01 08:00 (-3d) | 2013-04-05 09:00 → 2013-04-01 14:00 (-4d) |  |  | 64d → 9d |  |  |
| 34 | Inserir Receita | 2013-04-05 13:00 → 2013-04-02 08:00 (-3d) | 2013-04-05 14:00 → 2013-04-02 09:00 (-3d) |  |  | 64d → 9d |  |  |
| 35 | Manter Receita | 2013-04-08 08:00 → 2013-04-02 13:00 (-6d) | 2013-04-08 14:00 → 2013-04-03 09:00 (-5d) |  |  | 64d → 9d |  |  |
| 36 | Efetuar Login | 2013-04-09 08:00 → 2013-04-03 13:00 (-6d) | 2013-04-09 09:00 → 2013-04-03 14:00 (-6d) |  |  | 64d → 9d |  |  |
| 42 | **Diagramas UML** |  |  |  | 4% → 5% | 44d → 35.5d |  |  |
| 57 | Inserir Setor - Criação | 2013-03-29 08:00 → 2013-03-28 14:00 (-1d) | 2013-03-29 13:30 → 2013-03-28 14:00 (-1d) | 1.5h → 0h |  | 8.75d → 40d |  |  |
| 58 | Manter Setor - Criação | 2013-03-29 13:30 → 2013-03-28 14:00 (-1d) | 2013-04-01 09:00 → 2013-03-28 14:00 (-4d) | 1.5h → 0h |  | 8.75d → 40d |  |  |
| 71 | Inserir Empresa Contábil | 2013-04-09 13:00 → 2013-04-04 08:00 (-5d) | 2013-04-15 09:00 → 2013-04-09 14:00 (-6d) |  |  | 12d → 9d |  |  |
| 73 | Manter Cliente | 2013-04-15 13:00 → 2013-04-10 08:00 (-5d) | 2013-04-26 09:00 → 2013-04-22 14:00 (-4d) |  |  | 12d → 9d |  |  |
| 74 | Inserir Despesa | 2013-04-26 13:00 → 2013-04-23 08:00 (-3d) | 2013-04-30 09:00 → 2013-04-24 14:00 (-6d) |  |  | 12d → 9d |  |  |
| 75 | Manter Despesa | 2013-04-30 13:00 → 2013-04-25 08:00 (-5d) | 2013-05-03 09:00 → 2013-04-29 14:00 (-4d) |  |  | 12d → 9d |  |  |
| 80 | Inserir Usuário |  | 2013-04-17 13:30 → 2013-04-18 13:30 (+1d) | 6h → 8h |  | 10.25d → 19.25d |  |  |
| 81 | Manter Usuário | 2013-04-17 13:30 → 2013-04-18 13:30 (+1d) | 2013-04-23 13:30 → 2013-04-26 13:30 (+3d) | 8h → 12h |  | 10.25d → 19.25d |  |  |
| 82 | Inserir Setor | 2013-04-23 13:30 → 2013-04-26 13:30 (+3d) |  | 6h → 0h |  | 10.25d → 19.25d |  |  |
| 83 | Manter Setor |  | 2013-05-02 13:30 → 2013-04-26 13:30 (-6d) | 8h → 0h |  | 10.25d → 19.25d |  |  |
| 86 | **Testes** |  | 2013-05-17 14:00 → 2013-05-10 14:00 (-7d) | 30.5d → 25.5d |  | 4d → 11.25d |  |  |
| 87 | Plano de testes | 2013-05-03 13:00 → 2013-04-30 08:00 (-3d) | 2013-05-07 09:00 → 2013-05-01 14:00 (-6d) |  |  | 12d → 9d |  | resources Vivianne Sousa → Rômulo Aurélio |
| 89 | **Registros dos testes** |  | 2013-05-17 14:00 → 2013-05-10 14:00 (-7d) | 28.5d → 23.5d |  | 4d → 11.25d |  |  |
| 90 | **Casos de Teste** |  | 2013-04-23 13:30 → 2013-05-03 14:00 (+10d) | 10.25d → 18.5d |  | 7.75d → 11.25d |  |  |
| 105 | Informar Agenda | 2013-04-19 13:30 → 2013-05-02 08:00 (+13d) | 2013-04-23 13:30 → 2013-05-03 14:00 (+10d) |  |  | 7.75d → 9d | 104 → 87 | resources Sávio Luiz → Rômulo Aurélio |
| 106 | **Automatização de Testes** | 2013-04-23 13:30 → 2013-04-19 08:30 (-4d) | 2013-05-10 09:00 → 2013-05-06 14:00 (-4d) | 12.75d → 11.75d |  | 5.5d → 11.25d |  |  |
| 107 | Efetuar Login | 2013-04-23 13:30 → 2013-04-19 08:30 (-4d) | 2013-04-23 14:00 → 2013-04-19 09:00 (-4d) |  |  | 7.75d → 11.25d | 105 → 103 |  |
| 108 | Inserir Empresa Contábil | 2013-04-24 08:00 → 2013-04-19 13:00 (-5d) | 2013-04-24 14:00 → 2013-04-22 09:00 (-2d) |  |  | 7.75d → 11.25d |  |  |
| 109 | Inserir Cliente | 2013-04-25 08:00 → 2013-04-22 13:00 (-3d) | 2013-04-25 14:00 → 2013-04-23 09:00 (-2d) |  |  | 7.75d → 11.25d |  |  |
| 110 | Manter Cliente | 2013-04-26 08:00 → 2013-04-23 13:00 (-3d) | 2013-04-26 14:00 → 2013-04-24 09:00 (-2d) |  |  | 7.75d → 11.25d |  |  |
| 111 | Inserir Despesa | 2013-05-02 13:30 → 2013-05-06 08:00 (+4d) | 2013-05-03 08:30 → 2013-05-06 09:00 (+3d) |  |  | 10.25d → 9d | 83 → 105 |  |
| 112 | Manter Despesa | 2013-05-03 08:30 → 2013-05-06 13:00 (+3d) | 2013-05-03 13:30 → 2013-05-06 14:00 (+3d) |  |  | 10.25d → 9d |  |  |
| 113 | Inserir Receita | 2013-05-07 13:00 → 2013-04-30 08:00 (-7d) | 2013-05-07 14:00 → 2013-04-30 09:00 (-7d) |  |  | 12d → 17.5d | 87 → 75 |  |
| 114 | Manter Receita | 2013-05-08 08:00 → 2013-04-30 13:00 (-8d) | 2013-05-08 09:00 → 2013-04-30 14:00 (-8d) |  |  | 12d → 17.5d |  |  |
| 115 | Inserir Contador | 2013-05-08 13:00 → 2013-05-01 08:00 (-7d) | 2013-05-08 14:00 → 2013-05-01 09:00 (-7d) |  |  | 12d → 17.5d |  |  |
| 116 | Manter Contador | 2013-05-09 08:00 → 2013-05-01 13:00 (-8d) | 2013-05-09 09:00 → 2013-05-01 14:00 (-8d) |  |  | 12d → 17.5d |  |  |
| 117 | Inserir Usuário | 2013-05-09 13:00 → 2013-05-02 08:00 (-7d) | 2013-05-09 14:00 → 2013-05-02 09:00 (-7d) |  |  | 12d → 17.5d |  |  |
| 118 | Manter Usuário | 2013-05-10 08:00 → 2013-05-02 13:00 (-8d) | 2013-05-10 09:00 → 2013-05-02 14:00 (-8d) |  |  | 12d → 17.5d |  |  |
| 119 | Inserir Setor | 2013-04-29 08:00 → 2013-04-24 09:00 (-5d) | 2013-04-29 09:00 → 2013-04-24 09:00 (-5d) | 1h → 0h |  | 7.75d → 11.25d |  |  |
| 120 | Manter Setor | 2013-04-29 13:00 → 2013-04-24 09:00 (-5d) | 2013-04-29 14:00 → 2013-04-24 09:00 (-5d) | 1h → 0h |  | 7.75d → 11.25d |  |  |
| 121 | Informar Agenda | 2013-04-30 08:00 → 2013-04-24 13:00 (-6d) | 2013-05-01 14:00 → 2013-04-26 09:00 (-5d) |  |  | 7.75d → 11.25d |  |  |
| 122 | **Execução de Testes** | 2013-05-02 08:00 → 2013-04-26 13:00 (-6d) | 2013-05-13 14:00 → 2013-05-10 14:00 (-3d) | 8d → 10.5d |  | 7.75d → 9d |  |  |
| 123 | Efetuar Login | 2013-05-02 08:00 → 2013-04-26 13:00 (-6d) | 2013-05-02 08:30 → 2013-04-26 13:30 (-6d) |  |  | 7.75d → 11.25d |  |  |
| 124 | Inserir Empresa Contábil | 2013-05-02 08:30 → 2013-04-26 13:30 (-6d) | 2013-05-03 08:30 → 2013-04-29 13:30 (-4d) |  |  | 7.75d → 11.25d |  |  |
| 125 | Inserir Cliente | 2013-05-03 08:30 → 2013-04-29 13:30 (-4d) | 2013-05-06 08:30 → 2013-04-30 13:30 (-6d) |  |  | 7.75d → 11.25d |  |  |
| 126 | Manter Cliente | 2013-05-03 13:30 → 2013-05-07 08:00 (+4d) | 2013-05-06 13:30 → 2013-05-07 14:00 (+1d) |  |  | 10.25d → 9d |  |  |
| 127 | Inserir Despesa | 2013-05-06 13:30 → 2013-05-08 08:00 (+2d) | 2013-05-07 08:30 → 2013-05-08 09:00 (+1d) |  |  | 10.25d → 9d |  |  |
| 128 | Manter Despesa | 2013-05-07 08:30 → 2013-05-08 13:00 (+1d) | 2013-05-07 13:30 → 2013-05-08 14:00 (+1d) |  |  | 10.25d → 9d |  |  |
| 129 | Inserir Receita | 2013-05-07 13:30 → 2013-05-09 08:00 (+2d) | 2013-05-08 08:30 → 2013-05-09 09:00 (+1d) |  |  | 10.25d → 9d |  |  |
| 130 | Manter Receita | 2013-05-08 08:30 → 2013-05-09 13:00 (+1d) | 2013-05-08 13:30 → 2013-05-09 14:00 (+1d) |  |  | 10.25d → 9d |  |  |
| 131 | Inserir Contador | 2013-05-08 13:30 → 2013-05-10 08:00 (+2d) | 2013-05-09 08:30 → 2013-05-10 09:00 (+1d) |  |  | 10.25d → 9d |  |  |
| 132 | Manter Contador | 2013-05-09 08:30 → 2013-05-10 13:00 (+1d) | 2013-05-09 13:30 → 2013-05-10 14:00 (+1d) |  |  | 10.25d → 9d |  |  |
| 133 | Inserir Usuário | 2013-05-10 13:00 → 2013-05-03 08:00 (-7d) | 2013-05-10 14:00 → 2013-05-03 09:00 (-7d) |  |  | 12d → 17.5d |  |  |
| 134 | Manter Usuário | 2013-05-13 08:00 → 2013-05-03 13:00 (-10d) | 2013-05-13 09:00 → 2013-05-03 14:00 (-10d) |  |  | 16.5d → 22d |  |  |
| 135 | Inserir Setor | 2013-05-13 08:00 → 2013-05-03 13:00 (-10d) | 2013-05-13 09:00 → 2013-05-03 14:00 (-10d) |  |  | 12d → 17.5d |  |  |
| 136 | Manter Setor | 2013-05-13 13:00 → 2013-05-06 08:00 (-7d) | 2013-05-13 14:00 → 2013-05-06 09:00 (-7d) |  |  | 12d → 17.5d |  |  |
| 137 | Informar Agenda | 2013-05-06 08:30 → 2013-04-30 13:30 (-6d) | 2013-05-08 08:30 → 2013-05-02 13:30 (-6d) |  |  | 7.75d → 11.25d |  |  |
| 138 | Teste Integração | 2013-05-08 08:30 → 2013-05-02 13:30 (-6d) | 2013-05-14 08:30 → 2013-05-08 13:30 (-6d) |  |  | 7.75d → 11.25d |  |  |
| 139 | Teste Integração | 2013-05-14 08:00 → 2013-05-06 13:00 (-8d) | 2013-05-17 14:00 → 2013-05-10 09:00 (-7d) |  |  | 12d → 17.5d |  |  |

## Version 5 (saved 2013-04-09)

Note of the change: RM02: Atualização do Cronograma.

Last finish stays 2013-05-23. Complete tasks 12 → 18.

Changed:

| ID | Task | Start | Finish | Complete | Total float |
| --- | --- | --- | --- | --- | --- |
| 3 | **Planejamento** |  |  | 69% → 75% |  |
| 12 | Documento de Requisitos |  | 2013-03-19 14:00 A → 2013-03-19 14:00 | 100% → 95% | none → 47d |
| 13 | Levantamento e Criação da Arquitetura |  |  | 60% → 80% | 7.5d → 33.2d |
| 15 | **Gerencia de Configuração** |  |  | 64% → 77% |  |
| 19 | Auditoria do repositório (cumprimento dos padrões, respeito à organização, etc.) |  |  | 20% → 60% | 0.6d → 1.8d |
| 20 | Release Notes – Será desenvolvido a cada versão publicada do sistema |  |  | 20% → 60% |  |
| 21 | **Especificações e diagrama de caso de uso** |  |  | 26% → 55% | 13.25d → 36d |
| 22 | Informar Empresa Contábil |  | 2013-03-20 09:00 A | 80% → 100% | 7d → none |
| 23 | Inserir Cliente |  | 2013-03-22 09:00 A | 60% → 100% | 5.8d → none |
| 24 | Manter Cliente |  | 2013-03-26 09:00 A | 60% → 100% | 4.6d → none |
| 25 | Inserir Contador |  | 2013-03-26 14:00 A | 60% → 100% | 4.3d → none |
| 26 | Manter Contador | 2013-03-27 08:00 A |  | 0% → 60% | 64d → 41d |
| 27 | Inserir Usuário |  | 2013-03-28 09:00 A | 60% → 100% | 4d → none |
| 28 | Manter Usuário | 2013-03-28 13:00 A |  | 0% → 60% | 64d → 9.4d |
| 36 | Efetuar Login | 2013-04-03 13:00 A |  | 0% → 80% |  |
| 38 | **Arquitetura** |  |  | 3% → 8% | 30.5d → 8d |
| 41 | Documento de Arquitetura | 2013-03-28 08:00 A |  | 0% → 80% | 68.5d → 30.8d |
| 42 | **Diagramas UML** |  |  | 5% → 30% |  |
| 43 | Diagrama de Arquitetura - Revisão/Atualização |  |  | 60% → 80% | 7.5d → 30d |
| 44 | **Diagrama de Classes** | 2013-03-20 08:00 A |  | 0% → 24% |  |
| 45 | Efetuar Login - Revisão/Atualização | 2013-03-20 08:00 A |  | 0% → 80% | 40d → 10.55d |
| 46 | Inserir Empresa Contábil - Revisão/Atualização | 2013-03-20 08:30 A |  | 0% → 80% | 40d → 10.35d |
| 47 | Inserir Cliente - Revisão/Atualização | 2013-03-20 13:00 A |  | 0% → 80% | 8.75d → 9.55d |
| 48 | Manter Cliente - Criação | 2013-03-21 13:00 A |  | 0% → 80% |  |
| 60 | **Diagrama de Seqüência** | 2013-03-27 08:00 A |  | 0% → 36% | 10.25d → 39.5d |
| 61 | Efetuar Login - Revisão/Atualização | 2013-03-27 08:00 A | 2013-03-27 08:30 A | 0% → 100% | 47.75d → none |
| 62 | Inserir Cliente - Revisão/Atualização | 2013-03-27 08:30 A |  | 0% → 80% | 47.75d → 40.75d |
| 65 | Inserir Empresa Contábil - Revisão/Atualização | 2013-03-28 08:30 A | 2013-03-28 09:00 A | 0% → 100% | 47.75d → none |
| 69 | **Implementação** | 2013-03-29 13:30 A |  | 0% → 2% | 12.25d → 15.5d |
| 70 | Efetuar Login | 2013-03-29 13:30 A |  | 0% → 60% |  |

## Version 6 (saved 2013-06-03)

Note of the change: RM02: Atualização do Cronograma.

Last finish 2013-05-23 → 2013-05-27 (+4d). Complete tasks 18 → 108.

Removed: 5 Plano de Gerência de Riscos; 29 Inserir Setor; 30 Manter Setor; 39 Definição e Implementação (Feito no planejamento); 40 Layout de Telas (Feito no planejamento); 82 Inserir Setor; 83 Manter Setor; 103 Inserir Setor; 104 Manter Setor; 119 Inserir Setor; 120 Manter Setor; 121 Informar Agenda; 135 Inserir Setor; 136 Manter Setor; 139 Teste Integração

Changed:

| ID | Task | Start | Finish | Duration | Complete | Total float | Predecessors | Other |
| --- | --- | --- | --- | --- | --- | --- | --- | --- |
| 3 | **Planejamento** |  | 2013-03-27 14:00 A |  | 75% → 100% | 41d → none |  |  |
| 11 | Documento de Requisitos |  | 2013-03-19 14:00 A |  | 95% → 100% | 47d → none |  |  |
| 12 | Levantamento e Criação da Arquitetura |  | 2013-03-27 14:00 A |  | 80% → 100% | 33.2d → none |  |  |
| 13 | Layout de Telas |  | 2013-03-21 14:00 A |  | 20% → 100% | 45d → none |  |  |
| 14 | **Gerencia de Configuração** |  |  |  | 77% → 94% | 0d → 17.75d |  |  |
| 16 | Criação, gerenciamento e organização do Controle de Versão – Subversion |  | 2013-04-08 14:00 A |  | 80% → 100% | 8.2d → none |  |  |
| 17 | - Criação, gerenciamento e organização do Controle de Mudanças – Redmine |  | 2013-04-18 14:00 A |  | 80% → 100% | 1.8d → none |  |  |
| 18 | Auditoria do repositório (cumprimento dos padrões, respeito à organização, etc.) |  |  |  | 60% → 80% | 1.8d → 20.15d |  |  |
| 19 | Release Notes – Será desenvolvido a cada versão publicada do sistema |  |  |  | 60% → 80% | 0d → 17.75d |  |  |
| 20 | **Especificações e diagrama de caso de uso** |  | 2013-04-03 14:00 A |  | 55% → 100% | 36d → none |  |  |
| 25 | Manter Contador |  | 2013-03-27 14:00 A |  | 60% → 100% | 41d → none |  |  |
| 27 | Manter Usuário |  | 2013-03-29 09:00 A |  | 60% → 100% | 9.4d → none |  |  |
| 28 | Informar Agenda | 2013-03-25 08:00 A | 2013-03-26 14:00 → 2013-03-28 09:00 A (+2d) | 4h → 7h | 0% → 100% | 42d → none |  |  |
| 29 | Inserir Despesa | 2013-03-29 13:00 A | 2013-03-29 14:00 A |  | 0% → 100% | 9.4d → none | Manter Setor → 27 |  |
| 30 | Manter Despesa | 2013-04-01 08:00 A | 2013-04-01 14:00 A |  | 0% → 100% | 9.4d → none |  |  |
| 31 | Inserir Receita | 2013-04-02 08:00 A | 2013-04-02 09:00 A |  | 0% → 100% | 9.4d → none |  |  |
| 32 | Manter Receita | 2013-04-02 13:00 A | 2013-04-03 09:00 A |  | 0% → 100% | 9.4d → none |  |  |
| 33 | Efetuar Login |  | 2013-04-03 14:00 A |  | 80% → 100% | 9d → none |  |  |
| 34 | Manual de utilização | 2013-05-02 08:00 A | 2013-05-17 14:00 A |  | 0% → 100% | 0d → none |  |  |
| 35 | **Arquitetura** | 2013-03-12 08:00 A → 2013-03-20 08:00 A (+8d) | 2013-05-23 14:00 → 2013-05-27 13:30 (+4d) | 53d → 48.75d | 8% → 99% | 8d → 0d |  |  |
| 36 | Documento de Arquitetura |  | 2013-04-01 14:00 A |  | 80% → 100% | 30.8d → none |  |  |
| 37 | **Diagramas UML** |  | 2013-04-04 09:00 A |  | 30% → 100% | 35.5d → none |  |  |
| 38 | Diagrama de Arquitetura - Revisão/Atualização |  | 2013-04-02 14:00 A |  | 80% → 100% | 30d → none |  |  |
| 39 | **Diagrama de Classes** |  | 2013-04-04 09:00 A |  | 24% → 100% | 35.5d → none |  |  |
| 40 | Efetuar Login - Revisão/Atualização |  | 2013-03-20 08:30 A |  | 80% → 100% | 10.55d → none | Plano de Gerência de Riscos → none |  |
| 41 | Inserir Empresa Contábil - Revisão/Atualização |  | 2013-03-20 09:00 A |  | 80% → 100% | 10.35d → none |  |  |
| 42 | Inserir Cliente - Revisão/Atualização |  | 2013-03-21 09:00 A |  | 80% → 100% | 9.55d → none |  |  |
| 43 | Manter Cliente - Criação |  | 2013-03-22 09:00 A |  | 80% → 100% | 8.75d → none |  |  |
| 44 | Inserir Despesa - Revisão/Atualização | 2013-03-22 13:00 A | 2013-03-22 13:30 A |  | 0% → 100% | 8.75d → none |  |  |
| 45 | Manter Despesa - Criação | 2013-03-22 13:30 A | 2013-03-25 08:30 A |  | 0% → 100% | 40d → none |  |  |
| 46 | Inserir Receita - Revisão/Atualização | 2013-03-25 08:30 A | 2013-03-25 09:00 A |  | 0% → 100% | 40d → none |  |  |
| 47 | Manter Receita - Criação | 2013-03-25 13:00 A | 2013-03-25 14:00 A |  | 0% → 100% | 40d → none |  |  |
| 48 | Inserir Contador - Criação | 2013-03-26 08:00 A | 2013-03-26 13:30 A |  | 0% → 100% | 8.75d → none |  |  |
| 49 | Manter Contador - Criação | 2013-03-26 13:30 A | 2013-03-27 09:00 A |  | 0% → 100% | 40d → none |  |  |
| 50 | Inserir Usuário - Criação | 2013-03-27 13:00 A | 2013-03-28 08:30 A |  | 0% → 100% | 8.75d → none |  |  |
| 51 | Manter Usuário - Criação | 2013-03-28 08:30 A | 2013-03-28 14:00 A |  | 0% → 100% | 40d → none |  |  |
| 52 | Inserir Setor - Criação | 2013-03-28 14:00 A | 2013-03-28 14:00 A |  | 0% → 100% | 40d → none |  |  |
| 53 | Manter Setor - Criação | 2013-03-28 14:00 A | 2013-03-28 14:00 A |  | 0% → 100% | 40d → none |  |  |
| 54 | Informar Agenda - Criação | 2013-04-03 08:00 A | 2013-04-04 09:00 A |  | 0% → 100% | 30d → none |  |  |
| 55 | **Diagrama de Seqüência** |  | 2013-03-29 09:00 A |  | 36% → 100% | 39.5d → none |  |  |
| 57 | Inserir Cliente - Revisão/Atualização |  | 2013-03-27 13:30 A |  | 80% → 100% | 40.75d → none |  |  |
| 58 | Inserir Despesa - Revisão/Atualização | 2013-03-27 13:30 A | 2013-03-27 14:00 A |  | 0% → 100% | 47.75d → none |  |  |
| 59 | Inserir Receita - Revisão/Atualização | 2013-03-28 08:00 A | 2013-03-28 08:30 A |  | 0% → 100% | 40.75d → none |  |  |
| 61 | Informar Agenda | 2013-03-28 13:00 A | 2013-03-29 09:00 A |  | 0% → 100% | 10.25d → none |  |  |
| 62 | Diagrama de Distribuição - Revisão/Atualização | 2013-03-29 13:00 A | 2013-03-29 13:30 A |  | 0% → 100% | 10.25d → none |  |  |
| 64 | **Implementação** |  | 2013-05-14 09:00 A |  | 2% → 100% | 15.5d → none |  |  |
| 65 | Efetuar Login |  | 2013-04-02 13:30 A |  | 60% → 100% | 37.25d → none |  |  |
| 66 | Inserir Empresa Contábil | 2013-04-04 08:00 A | 2013-04-09 14:00 A |  | 0% → 100% | 9d → none |  |  |
| 67 | Inserir Cliente | 2013-04-04 13:00 A | 2013-04-16 09:00 A |  | 0% → 100% | 30d → none |  |  |
| 68 | Manter Cliente | 2013-04-10 08:00 A | 2013-04-22 14:00 A |  | 0% → 100% | 9d → none |  |  |
| 69 | Inserir Despesa | 2013-04-23 08:00 A | 2013-04-24 14:00 A |  | 0% → 100% | 9d → none |  |  |
| 70 | Manter Despesa | 2013-04-25 08:00 A | 2013-04-29 14:00 A |  | 0% → 100% | 9d → none |  |  |
| 71 | Inserir Receita | 2013-03-29 13:30 A | 2013-04-02 13:30 A |  | 0% → 100% | 10.25d → none |  |  |
| 72 | Manter Receita | 2013-04-02 13:30 A | 2013-04-05 13:30 A |  | 0% → 100% | 10.25d → none |  |  |
| 73 | Inserir Contador | 2013-04-05 13:30 A | 2013-04-09 13:30 A |  | 0% → 100% | 10.25d → none |  |  |
| 74 | Manter Contador | 2013-04-09 13:30 A | 2013-04-12 13:30 A |  | 0% → 100% | 10.25d → none |  |  |
| 75 | Inserir Usuário | 2013-04-12 13:30 A | 2013-04-18 13:30 A |  | 0% → 100% | 19.25d → none |  |  |
| 76 | Manter Usuário | 2013-04-18 13:30 A | 2013-04-26 13:30 A |  | 0% → 100% | 19.25d → none |  |  |
| 77 | Informar Agenda | 2013-04-16 13:00 A | 2013-05-14 09:00 A |  | 0% → 100% | 15.5d → none |  |  |
| 78 | Manual de instalação (implantação) - Criação | 2013-05-20 08:00 A | 2013-05-23 14:00 A |  | 0% → 100% | 0d → none |  |  |
| 79 | **Testes** | 2013-04-05 13:00 A | 2013-05-10 14:00 → 2013-05-27 13:30 (+17d) | 25.5d → 36.25d | 0% → 96% | 11.25d → 0d |  |  |
| 80 | Plano de testes | 2013-04-30 08:00 → 2013-04-05 13:00 A (-25d) | 2013-05-01 14:00 → 2013-04-11 08:12 A (-20d) |  | 0% → 100% | 9d → none | 70 → 63 | resources Rômulo Aurélio → Sávio Luiz |
| 81 | Projeto de testes | 2013-04-05 13:00 A | 2013-04-09 09:00 → 2013-04-11 08:36 A (+2d) |  | 0% → 100% | 7.75d → none | 63 → 80 |  |
| 82 | **Registros dos testes** | 2013-04-09 13:00 A | 2013-05-10 14:00 → 2013-05-27 13:30 (+17d) | 23.5d → 34.25d | 0% → 95% | 11.25d → 0d |  |  |
| 83 | **Casos de Teste** | 2013-04-09 13:00 A | 2013-05-03 14:00 → 2013-04-23 13:30 A (-10d) | 18.5d → 10.25d | 0% → 100% | 11.25d → none |  |  |
| 84 | Efetuar Login | 2013-04-09 13:00 A | 2013-04-09 13:30 A |  | 0% → 100% | 11.25d → none |  |  |
| 85 | Inserir Empresa Contábil | 2013-04-09 13:30 A | 2013-04-10 13:30 A |  | 0% → 100% | 7.75d → none |  |  |
| 86 | Inserir Cliente | 2013-04-10 13:30 A | 2013-04-11 13:30 A |  | 0% → 100% | 7.75d → none |  |  |
| 87 | Manter Cliente | 2013-04-11 13:30 A | 2013-04-12 13:30 A |  | 0% → 100% | 7.75d → none |  |  |
| 88 | Inserir Despesa | 2013-04-12 13:30 A | 2013-04-15 08:30 A |  | 0% → 100% | 7.75d → none |  |  |

| ID | Task | Start | Finish | Duration | Complete | Total float | Predecessors | Other |
| --- | --- | --- | --- | --- | --- | --- | --- | --- |
| 89 | Manter Despesa | 2013-04-15 08:30 A | 2013-04-15 13:30 A |  | 0% → 100% | 7.75d → none |  |  |
| 90 | Inserir Receita | 2013-04-15 13:30 A | 2013-04-16 08:30 A |  | 0% → 100% | 7.75d → none |  |  |
| 91 | Manter Receita | 2013-04-16 08:30 A | 2013-04-16 13:30 A |  | 0% → 100% | 7.75d → none |  |  |
| 92 | Inserir Contador | 2013-04-16 13:30 A | 2013-04-17 08:30 A |  | 0% → 100% | 7.75d → none |  |  |
| 93 | Manter Contador | 2013-04-17 08:30 A | 2013-04-17 13:30 A |  | 0% → 100% | 7.75d → none |  |  |
| 94 | Inserir Usuário | 2013-04-17 13:30 A | 2013-04-18 08:30 A |  | 0% → 100% | 7.75d → none |  |  |
| 95 | Manter Usuário | 2013-04-18 08:30 A | 2013-04-18 13:30 A |  | 0% → 100% | 7.75d → none |  |  |
| 96 | Informar Agenda | 2013-05-02 08:00 → 2013-04-19 13:30 A (-13d) | 2013-05-03 14:00 → 2013-04-23 13:30 A (-10d) |  | 0% → 100% | 9d → none | 80 → 95 | resources Rômulo Aurélio → Sávio Luiz |
| 97 | **Automatização de Testes** | 2013-04-19 08:30 A | 2013-05-06 14:00 → 2013-04-30 09:00 A (-6d) | 11.75d → 7.25d | 0% → 100% | 11.25d → none |  |  |
| 98 | Efetuar Login | 2013-04-19 08:30 A | 2013-04-19 09:00 A |  | 0% → 100% | 11.25d → none | Inserir Setor → none |  |
| 99 | Inserir Empresa Contábil | 2013-04-19 13:00 A | 2013-04-22 09:00 A |  | 0% → 100% | 11.25d → none |  |  |
| 100 | Inserir Cliente | 2013-04-22 13:00 A | 2013-04-23 09:00 A |  | 0% → 100% | 11.25d → none |  |  |
| 101 | Manter Cliente | 2013-04-23 13:00 A | 2013-04-24 09:00 A |  | 0% → 100% | 11.25d → none |  |  |
| 102 | Inserir Despesa | 2013-05-06 08:00 → 2013-04-24 13:00 A (-12d) | 2013-05-06 09:00 → 2013-04-24 14:00 A (-12d) |  | 0% → 100% | 9d → none | 96 → 101 | resources Rômulo Aurélio → Sávio Luiz |
| 103 | Manter Despesa | 2013-05-06 13:00 → 2013-04-25 08:00 A (-11d) | 2013-05-06 14:00 → 2013-04-25 09:00 A (-11d) |  | 0% → 100% | 9d → none |  | resources Rômulo Aurélio → Sávio Luiz |
| 104 | Inserir Receita | 2013-04-30 08:00 → 2013-04-25 13:00 A (-5d) | 2013-04-30 09:00 → 2013-04-25 14:00 A (-5d) |  | 0% → 100% | 17.5d → none | 70 → 103 | resources Vivianne Sousa → Sávio Luiz |
| 105 | Manter Receita | 2013-04-30 13:00 → 2013-04-26 08:00 A (-4d) | 2013-04-30 14:00 → 2013-04-26 09:00 A (-4d) |  | 0% → 100% | 17.5d → none |  | resources Vivianne Sousa → Sávio Luiz |
| 106 | Inserir Contador | 2013-05-01 08:00 → 2013-04-26 13:00 A (-5d) | 2013-05-01 09:00 → 2013-04-26 14:00 A (-5d) |  | 0% → 100% | 17.5d → none |  | resources Vivianne Sousa → Sávio Luiz |
| 107 | Manter Contador | 2013-05-01 13:00 → 2013-04-29 08:00 A (-2d) | 2013-05-01 14:00 → 2013-04-29 09:00 A (-2d) |  | 0% → 100% | 17.5d → none |  | resources Vivianne Sousa → Sávio Luiz |
| 108 | Inserir Usuário | 2013-05-02 08:00 → 2013-04-29 13:00 A (-3d) | 2013-05-02 09:00 → 2013-04-29 14:00 A (-3d) |  | 0% → 100% | 17.5d → none |  | resources Vivianne Sousa → Sávio Luiz |
| 109 | Manter Usuário | 2013-05-02 13:00 → 2013-04-30 08:00 A (-2d) | 2013-05-02 14:00 → 2013-04-30 09:00 A (-2d) |  | 0% → 100% | 17.5d → none |  | resources Vivianne Sousa → Sávio Luiz |
| 110 | **Execução de Testes** | 2013-04-26 13:00 → 2013-05-02 13:00 A (+6d) | 2013-05-10 14:00 → 2013-05-15 13:30 A (+5d) | 10.5d → 9.25d | 0% → 100% | 9d → none |  |  |
| 111 | Efetuar Login | 2013-04-26 13:00 → 2013-05-02 13:00 A (+6d) | 2013-04-26 13:30 → 2013-05-02 13:30 A (+6d) |  | 0% → 100% | 11.25d → none | Informar Agenda → 109 |  |
| 112 | Inserir Empresa Contábil | 2013-04-26 13:30 → 2013-05-02 13:30 A (+6d) | 2013-04-29 13:30 → 2013-05-03 13:30 A (+4d) |  | 0% → 100% | 11.25d → none |  |  |
| 113 | Inserir Cliente | 2013-04-29 13:30 → 2013-05-03 13:30 A (+4d) | 2013-04-30 13:30 → 2013-05-06 13:30 A (+6d) |  | 0% → 100% | 11.25d → none |  |  |
| 114 | Manter Cliente | 2013-05-07 08:00 → 2013-05-06 13:30 A (-1d) | 2013-05-07 14:00 → 2013-05-07 13:30 A |  | 0% → 100% | 9d → none | 103 → 113 | resources Rômulo Aurélio → Sávio Luiz |
| 115 | Inserir Despesa | 2013-05-08 08:00 → 2013-05-07 13:30 A (-1d) | 2013-05-08 09:00 → 2013-05-08 08:30 A |  | 0% → 100% | 9d → none |  | resources Rômulo Aurélio → Sávio Luiz |
| 116 | Manter Despesa | 2013-05-08 13:00 → 2013-05-08 08:30 A | 2013-05-08 14:00 → 2013-05-08 13:30 A |  | 0% → 100% | 9d → none |  | resources Rômulo Aurélio → Sávio Luiz |
| 117 | Inserir Receita | 2013-05-09 08:00 → 2013-05-08 13:30 A (-1d) | 2013-05-09 09:00 → 2013-05-09 08:30 A |  | 0% → 100% | 9d → none |  | resources Rômulo Aurélio → Sávio Luiz |
| 118 | Manter Receita | 2013-05-09 13:00 → 2013-05-09 08:30 A | 2013-05-09 14:00 → 2013-05-09 13:30 A |  | 0% → 100% | 9d → none |  | resources Rômulo Aurélio → Sávio Luiz |
| 119 | Inserir Contador | 2013-05-10 08:00 → 2013-05-09 13:30 A (-1d) | 2013-05-10 09:00 → 2013-05-10 08:30 A |  | 0% → 100% | 9d → none |  | resources Rômulo Aurélio → Sávio Luiz |
| 120 | Manter Contador | 2013-05-10 13:00 → 2013-05-10 08:30 A | 2013-05-10 14:00 → 2013-05-10 13:30 A |  | 0% → 100% | 9d → none |  | resources Rômulo Aurélio → Sávio Luiz |
| 121 | Inserir Usuário | 2013-05-03 08:00 → 2013-05-10 13:30 A (+7d) | 2013-05-03 09:00 → 2013-05-13 08:30 A (+10d) |  | 0% → 100% | 17.5d → none | 109 → 120 | resources Vivianne Sousa → Sávio Luiz |
| 122 | Manter Usuário | 2013-05-03 13:00 → 2013-05-13 08:30 A (+10d) | 2013-05-03 14:00 → 2013-05-13 13:30 A (+10d) |  | 0% → 100% | 22d → none |  | resources Vivianne Sousa → Sávio Luiz |
| 123 | Informar Agenda | 2013-04-30 13:30 → 2013-05-13 13:30 A (+13d) | 2013-05-02 13:30 → 2013-05-15 13:30 A (+13d) |  | 0% → 100% | 11.25d → none | 113 → 122 |  |
| 124 | Teste Integração | 2013-05-02 13:30 → 2013-05-15 13:30 A (+13d) | 2013-05-08 13:30 → 2013-05-27 13:30 (+19d) | 8h → 16h | 0% → 80% | 11.25d → 0d |  |  |

## Version 7 (saved 2013-06-07)

Note of the change: RM02: Atualização do Cronograma.

Last finish stays 2013-05-27. Complete tasks 108 → 111.

Changed:

| ID | Task | Finish | Complete | Total float |
| --- | --- | --- | --- | --- |
| 14 | **Gerencia de Configuração** | 2013-05-01 14:00 A | 94% → 100% | 17.75d → none |
| 18 | Auditoria do repositório (cumprimento dos padrões, respeito à organização, etc.) | 2013-04-26 14:00 A | 80% → 100% | 20.15d → none |
| 19 | Release Notes – Será desenvolvido a cada versão publicada do sistema | 2013-05-01 14:00 A | 80% → 100% | 17.75d → none |
| 35 | **Arquitetura** | 2013-05-27 13:30 A | 99% → 100% | 0d → none |
| 79 | **Testes** | 2013-05-27 13:30 A | 96% → 100% | 0d → none |
| 82 | **Registros dos testes** | 2013-05-27 13:30 A | 95% → 100% | 0d → none |
| 124 | Teste Integração | 2013-05-27 13:30 A | 80% → 100% | 0d → none |
